Schedule from a web Gantt chart, 2025-10-27 to 2027-05-31.
Saturdays and Sundays are off

## Schedule

| ID | WBS | Task | Duration | Start | Finish | Complete |
| --- | --- | --- | --- | --- | --- | --- |
| 2 | 1 | **财务核算** | 395d | 2025-10-27 | 2027-04-30 | 7% |
| 3 | 1.1 | **总账接口** | 235d | 2025-10-27 | 2026-09-18 | 52% |
| 4 | 1.1.1 | 接口方案确定及其他准备工作 | 5d | 2025-10-27 | 2025-10-31 | 100% |
| 5 | 1.1.2 | 确认外部系统与本系统档案之间的对照关系，并完成配置 | 5d | 2026-09-07 | 2026-09-11 | 80% |
| 6 | 1.1.3 | 配置单据模板（需要使用辅助、会计科目规则档案在编码字段维护档案类型，修改字段名称） | 5d | 2026-09-07 | 2026-09-11 | 50% |
| 7 | 1.1.4 | 确认科目单据规则，并完成配置 | 5d | 2026-09-07 | 2026-09-11 | 50% |
| 8 | 1.1.5 | 确认业务场景维护，并完成配置 | 5d | 2026-09-07 | 2026-09-11 | 50% |
| 9 | 1.1.6 | 下载数据（自动下载数据或者手动下载数据） | 5d | 2026-09-07 | 2026-09-11 | 90% |
| 10 | 1.1.7 | 生成凭证并核对凭证金额 | 5d | 2026-09-14 | 2026-09-18 |  |
| 11 | 1.1.8 | 联查凭证 | 5d | 2026-09-14 | 2026-09-18 |  |
| 12 | 1.2 | **全面预算** | 44d | 2026-09-01 | 2026-10-30 | 17% |
| 13 | 1.2.1 | 预算执行中预算号，预算调整单，预算执行单的编码规则确认 | 4d | 2026-09-01 | 2026-09-04 | 80% |
| 14 | 1.2.2 | 确认预算号执行权限 | 4d | 2026-09-01 | 2026-09-04 | 80% |
| 15 | 1.2.3 | 确认预算执行的控制规则 | 4d | 2026-09-01 | 2026-09-04 | 80% |
| 16 | 1.2.4 | 基础数据导入 | 4d | 2026-09-01 | 2026-09-04 | 80% |
| 17 | 1.2.5 | 预算填报 | 40d | 2026-09-07 | 2026-10-30 |  |
| 18 | 1.2.6 | 预算指标权限分配 | 5d | 2026-09-07 | 2026-09-11 |  |
| 19 | 1.2.7 | 预算日常调整调剂单据表单以及审批流程的确认 | 7d | 2026-10-08 | 2026-10-16 |  |
| 20 | 1.2.8 | 预算中期调整流程及表单的确认 | 7d | 2026-10-08 | 2026-10-16 |  |
| 21 | 1.3 | **报销管理** | 84d | 2026-09-07 | 2026-12-31 |  |
| 22 | 1.3.1 | 上线前功能测试 | 18d | 2026-09-07 | 2026-09-30 |  |
| 23 | 1.3.2 | 培训资料资料准备 | 3d | 2026-09-28 | 2026-09-30 |  |
| 24 | 1.3.3 | 上线培训 | 1d | 2026-10-08 | 2026-10-08 |  |
| 25 | 1.3.4 | 试运行及功能优化 | 60d | 2026-10-09 | 2026-12-31 |  |

| ID | WBS | Task | Duration | Start | Finish |
| --- | --- | --- | --- | --- | --- |
| 26 | 1.4 | **应收应付** | 84d | 2026-09-07 | 2026-12-31 |
| 27 | 1.4.1 | 上线前功能测试 | 18d | 2026-09-07 | 2026-09-30 |
| 28 | 1.4.2 | 培训资料资料准备 | 3d | 2026-09-28 | 2026-09-30 |
| 29 | 1.4.3 | 上线培训 | 1d | 2026-10-08 | 2026-10-08 |
| 30 | 1.4.4 | 试运行及功能优化 | 60d | 2026-10-09 | 2026-12-31 |
| 31 | 1.5 | **固定资产** | 84d | 2026-09-07 | 2026-12-31 |
| 32 | 1.5.1 | 上线前功能测试 | 5d | 2026-09-07 | 2026-09-11 |
| 33 | 1.5.2 | 培训资料资料准备 | 5d | 2026-09-14 | 2026-09-18 |
| 34 | 1.5.3 | 上线培训 | 1d | 2026-10-08 | 2026-10-08 |
| 35 | 1.5.4 | 导入9月最新资产卡片 | 2d | 2026-10-08 | 2026-10-09 |
| 36 | 1.5.5 | 系统上线使用并优化功能(按月计提折旧) | 59d | 2026-10-12 | 2026-12-31 |
| 37 | 1.5.6 | 调整、核实资产卡片数据 | 59d | 2026-10-12 | 2026-12-31 |
| 38 | 1.6 | **薪酬管理** | 40d | 2026-09-07 | 2026-10-30 |
| 39 | 1.6.1 | 调整自动凭证生成规则 | 18d | 2026-09-07 | 2026-09-30 |
| 40 | 1.6.2 | 核对自动凭证生成费用分摊准确性 | 17d | 2026-10-08 | 2026-10-30 |
| 41 | 1.7 | **资金管理** | 1d | 2026-10-08 | 2026-10-08 |
| 42 | 1.7.1 | 确认是否需要使用 | 1d | 2026-10-08 | 2026-10-08 |
| 43 | 1.8 | 成本管理 | 50d | 2027-02-22 | 2027-04-30 |
| 44 | 2 | **人力资源** | 106d | 2026-09-07 | 2027-02-01 |
| 45 | 2.1 | **考勤管理** | 101d | 2026-09-14 | 2027-02-01 |
| 46 | 2.1.1 | 康复科功能演示及优化 | 10d | 2026-09-14 | 2026-09-25 |
| 47 | 2.1.2 | 康复科线上排班功能试运行 | 23d | 2026-09-30 | 2026-10-30 |
| 48 | 2.1.3 | 确认【加班规则】【中夜班规则】【休假规则】【补贴规则】【考勤转换规则】【日历设置】，设计方案 | 7d | 2026-10-08 | 2026-10-16 |
| 49 | 2.1.4 | 【配置参数】确认并设置 | 7d | 2026-10-08 | 2026-10-16 |
| 50 | 2.1.5 | 考勤角色、考勤权限（资源权限和菜单权限） | 10d | 2026-10-19 | 2026-10-30 |
| 51 | 2.1.6 | 确认参与考勤的人员，批量导入（人员变动需及时更新） | 10d | 2026-10-19 | 2026-10-30 |
| 52 | 2.1.7 | 确认用户常用报表&自定义报表需求 | 5d | 2026-11-02 | 2026-11-06 |
| 53 | 2.1.8 | 【加班管理】流程（需考虑是否启用审批流） | 5d | 2026-11-02 | 2026-11-06 |
| 54 | 2.1.9 | 【排班管理】流程 | 5d | 2026-11-02 | 2026-11-06 |
| 55 | 2.1.10 | 【中夜班管理】流程（需考虑是否启用审批流） | 5d | 2026-11-02 | 2026-11-06 |
| 56 | 2.1.11 | 上线前功能测试及调整 | 10d | 2026-11-09 | 2026-11-20 |
| 57 | 2.1.12 | 培训资料准备 | 5d | 2026-11-23 | 2026-11-27 |
| 58 | 2.1.13 | 培训并上线 | 1d | 2026-11-30 | 2026-11-30 |
| 59 | 2.1.14 | 上线使用及功能优化 | 45d | 2026-12-01 | 2027-02-01 |

| ID | WBS | Task | Duration | Start | Finish |
| --- | --- | --- | --- | --- | --- |
| 60 | 2.2 | **年度考核** | 40d | 2026-09-07 | 2026-10-30 |
| 61 | 2.2.1 | 考核项目设置 | 5d | 2026-09-07 | 2026-09-11 |
| 62 | 2.2.2 | 考核模板设置 | 5d | 2026-09-14 | 2026-09-18 |
| 63 | 2.2.3 | 考核流程设置 | 8d | 2026-09-21 | 2026-09-30 |
| 64 | 2.2.4 | 年度考核上线使用 | 17d | 2026-10-08 | 2026-10-30 |
| 65 | 2.3 | **请假管理** | 84d | 2026-09-07 | 2026-12-31 |
| 66 | 2.3.1 | 重新导入已请假记录 | 18d | 2026-09-07 | 2026-09-30 |
| 67 | 2.3.2 | 请假功能上线使用 | 1d | 2026-10-08 | 2026-10-08 |
| 68 | 2.3.3 | 上线试运行并优化功能 | 61d | 2026-10-08 | 2026-12-31 |
| 69 | 3 | **物资管理** | 84d | 2026-09-07 | 2026-12-31 |
| 70 | 3.1 | 需求调研 | 5d | 2026-09-07 | 2026-09-11 |
| 71 | 3.2 | **系统实施** | 35d | 2026-09-14 | 2026-10-30 |
| 72 | 3.2.1 | 确认并进行物资基本分类设置 | 5d | 2026-09-14 | 2026-09-18 |
| 73 | 3.2.2 | 确认并进行物资核算分类设置 | 5d | 2026-09-14 | 2026-09-18 |
| 74 | 3.2.3 | 确认物资基本分类与核算分类对照关系，并进行设置 | 5d | 2026-09-14 | 2026-09-18 |
| 75 | 3.2.4 | 确认并进行计量单位档案设置 | 5d | 2026-09-14 | 2026-09-18 |
| 76 | 3.2.5 | 确认并进行仓库档案设置 | 5d | 2026-09-14 | 2026-09-18 |
| 77 | 3.2.6 | 确认并进行往来单位分类设置 | 5d | 2026-09-14 | 2026-09-18 |
| 78 | 3.2.7 | 进行物资档案设置 | 5d | 2026-09-14 | 2026-09-18 |
| 79 | 3.2.8 | 进行物资资质信息设置 | 5d | 2026-09-14 | 2026-09-18 |
| 80 | 3.2.9 | 确认物资管理应用的核算范围并设置 | 5d | 2026-09-14 | 2026-09-18 |
| 81 | 3.2.10 | 确认物资管理应用的计价方式并设置 | 5d | 2026-09-14 | 2026-09-18 |
| 82 | 3.2.11 | 确认物资分类、科室档案属性与财务会计科目对照关系并设置 | 5d | 2026-09-14 | 2026-09-18 |
| 83 | 3.2.12 | 进行物资管理系统参数设置 | 5d | 2026-09-14 | 2026-09-18 |
| 84 | 3.2.13 | 确认业务类型及参数并设置 | 5d | 2026-09-14 | 2026-09-18 |
| 85 | 3.2.14 | 业务单据的编码规则设置 | 6d | 2026-09-18 | 2026-09-25 |
| 86 | 3.2.15 | 常规采购耗材流程参照 | 6d | 2026-09-18 | 2026-09-25 |
| 87 | 3.2.16 | 采购自动补货流程参照（与普通采购流程） | 6d | 2026-09-18 | 2026-09-25 |
| 88 | 3.2.17 | 确定仓库的安全库存和最高库存，录入库存计划 | 6d | 2026-09-18 | 2026-09-25 |
| 89 | 3.2.18 | 确认HRP部门与仓库对照 | 6d | 2026-09-18 | 2026-09-25 |
| 90 | 3.2.19 | 条码规则配置（主条码配置规则） | 6d | 2026-09-18 | 2026-09-25 |
| 91 | 3.2.20 | 条码打印，用于入库后快捷批量打印主条码或唯一码 | 6d | 2026-09-18 | 2026-09-25 |
| 92 | 3.2.21 | 功能测试并调整 | 20d | 2026-09-28 | 2026-10-23 |
| 93 | 3.2.22 | 准备培训资料 | 5d | 2026-10-26 | 2026-10-30 |

| ID | WBS | Task | Duration | Start | Finish |
| --- | --- | --- | --- | --- | --- |
| 94 | 3.2.23 | **医嘱核销接口(根据目前业务情况不建议使用)** | 10d | 2026-09-14 | 2026-09-25 |
| 95 | 3.2.23.1 | 确认HRP部门与HIS部门对照，用于与HIS收费接口 | 10d | 2026-09-14 | 2026-09-25 |
| 96 | 3.2.23.2 | 确认HRP部门与HIS部门对照，用于与HIS收费接口 | 10d | 2026-09-14 | 2026-09-25 |
| 97 | 3.2.23.3 | 确认物资与收费项目对照 | 10d | 2026-09-14 | 2026-09-25 |
| 98 | 3.2.23.4 | 普通可收费耗材管理流程（HIS与HRP接口，详见标准接口文档） | 1d | 2026-09-14 | 2026-09-14 |
| 99 | 3.2.23.5 | 高值耗材管理流程，HIS与HRP接口，详见标准接口文档 | 1d | 2026-09-14 | 2026-09-14 |
| 100 | 3.3 | 上线试运行 | 44d | 2026-11-02 | 2026-12-31 |
| 101 | 4 | **决策分析** | 71d | 2027-02-22 | 2027-05-31 |
| 102 | 4.1 | 人力主题 | 71d | 2027-02-22 | 2027-05-31 |
| 103 | 4.2 | 财务主题 | 71d | 2027-02-22 | 2027-05-31 |
| 104 | 4.3 | 物资主题 | 71d | 2027-02-22 | 2027-05-31 |
